# 罗田数据提交

How a schedule from a web Gantt chart changed from version to version. A marks actual dates.

## Version 1 (saved 2024-07-12)

| ID | Task | Duration | Start | Finish | Predecessors | Complete |
| --- | --- | --- | --- | --- | --- | --- |
| 2 | 六大类数据及关联小类数据关联相关部门确定 | 3d | 2024-07-11 | 2024-07-15 |  | 80% |
| 3 | 编码赋码接口申请 | 3d | 2024-07-11 | 2024-07-15 |  | 100% |
| 4 | 县域提交标准的解读与罗田需要注意的事项文件制作 | 3d | 2024-07-11 | 2024-07-15 |  | 100% |
| 5 | 房屋面二次核验新功能开发，测试，上线 | 4d | 2024-07-11 | 2024-07-16 |  | 30% |
| 6 | 周二政府会议定调相关安排 | 1d | 2024-07-16 | 2024-07-16 | 2, 3, 4 |  |
| 7 | 汇编工作机制材料 | 14d | 2024-07-17 | 2024-08-05 | 6 |  |
| 8 | 县域数据目录确认 | 9d | 2024-07-17 | 2024-07-29 | 6 |  |
| 9 | 制定本地相应的制度规定和标准规范 | 9d | 2024-07-17 | 2024-07-29 | 6 |  |
| 10 | 建立满足市级要求的县域数据成果库 | 9d | 2024-07-17 | 2024-07-29 | 6 |  |
| 11 | 民政或自规部门出具中心区面积证明材料 | 9d | 2024-07-17 | 2024-07-29 | 6 |  |
| 12 | 罗田城区桥面归属于那个道路面--民政局 | 9d | 2024-07-17 | 2024-07-29 | 6 |  |
| 13 | 城区行政单位电子政务外网覆盖率100% | 14d | 2024-07-17 | 2024-08-05 | 6 |  |
| 14 | 统一标准地址流水线V2.0改造 | 14d | 2024-07-17 | 2024-08-05 | 6 |  |
| 15 | 开发区人口录入 | 14d | 2024-07-17 | 2024-08-05 | 6 |  |
| 16 | 开发区企业数据录入 | 14d | 2024-07-17 | 2024-08-05 | 6 |  |
| 17 | 房屋面二次核验培训准备 | 3d | 2024-07-12 | 2024-07-16 |  | 30% |
| 18 | 房屋面二次核验培训 | 1d | 2024-07-17 | 2024-07-17 | 6, 17, 5, 19 |  |
| 19 | 增补的4000条房屋面数据上系统 | 2d | 2024-07-11 | 2024-07-12 |  | 50% |
| 20 | 房屋面二次核验 | 8d | 2024-07-18 | 2024-07-29 | 18 |  |
| 21 | 开发区房屋面类型确认 | 8d | 2024-07-18 | 2024-07-29 | 18 |  |
| 22 | 行政区划、城市道路、水域河流数据编码赋码（包括调试） | 14d | 2024-07-17 | 2024-08-05 | 25, 23, 24 |  |
| 23 | 城市道路数据准备 | 5d | 2024-07-10 | 2024-07-16 |  | 100% |
| 24 | 水域河流数据准备 | 5d | 2024-07-10 | 2024-07-16 |  | 50% |
| 25 | 行政区划数据准备 | 5d | 2024-07-10 | 2024-07-16 |  | 30% |
| 26 | 标准地址数据编码赋码 | 1d | 2024-08-06 | 2024-08-06 | 28, 22 |  |
| 27 | 成果房屋面数据编码赋码 | 1d | 2024-08-07 | 2024-08-07 | 26 |  |
| 28 | 标准地址数据准备 | 5d | 2024-07-30 | 2024-08-05 | 21, 20 |  |
| 29 | 数据交汇市平台并与市平台对接 | 8d | 2024-08-08 | 2024-08-19 | 31, 27, 30 |  |
| 30 | 航天宏图中心城区dem数据 | 18d | 2024-07-10 | 2024-08-02 |  |  |
| 31 | 附属性建筑物编码赋码 | 1d | 2024-08-06 | 2024-08-06 | 33, 32 |  |
| 32 | 开发区附属性建筑物类型确认 | 14d | 2024-07-17 | 2024-08-05 | 6 |  |
| 33 | 附属性建筑物标明建筑物类型和名称 | 14d | 2024-07-17 | 2024-08-05 | 6 |  |

## Version 2 (saved 2024-07-12)

Last finish stays 2024-08-19. Complete tasks 3 → 4.

Added:

| ID | Task | Duration | Start | Finish | Predecessors |
| --- | --- | --- | --- | --- | --- |
| 34 | 城区人口按照省标准导出 | 2d | 2024-08-06 | 2024-08-07 | 15 |
| 35 | 城区单位按照省标准导出 | 2d | 2024-08-06 | 2024-08-07 | 16 |

Changed:

| ID | Task | Complete | Predecessors |
| --- | --- | --- | --- |
| 2 | 六大类数据及关联小类数据关联相关部门确定 | 80% → 100% |  |
| 29 | 数据交汇市平台并与市平台对接 |  | 31, 27, 30 → 31, 27, 30, 34, 35 |

## Version 3 (saved 2024-07-15)

Last finish stays 2024-08-19. Complete tasks 4 → 7.

Changed:

| ID | Task | Finish | Duration | Complete |
| --- | --- | --- | --- | --- |
| 6 | 周二政府会议定调相关安排 |  |  | 0% → 100% |
| 10 | 建立满足市级要求的县域数据成果库 |  |  | 0% → 10% |
| 11 | 民政或自规部门出具中心区面积证明材料 |  |  | 0% → 50% |
| 17 | 房屋面二次核验培训准备 |  |  | 30% → 70% |
| 19 | 增补的4000条房屋面数据上系统 | 2024-07-12 → 2024-07-15 (+3d) | 2d → 3d | 50% → 100% |
| 24 | 水域河流数据准备 |  |  | 50% → 100% |

## Version 4 (saved 2024-07-16)

Last finish stays 2024-08-19. Complete tasks 7 → 10.

Changed:

| ID | Task | Finish | Duration | Complete |
| --- | --- | --- | --- | --- |
| 12 | 罗田城区桥面归属于那个道路面--民政局 |  |  | 0% → 100% |
| 14 | 统一标准地址流水线V2.0改造 | 2024-08-05 → 2024-08-09 (+4d) | 14d → 18d | 0% → 20% |
| 17 | 房屋面二次核验培训准备 |  |  | 70% → 100% |
| 30 | 航天宏图中心城区dem数据 |  |  | 0% → 100% |
